# roadmap

Schedule from MS Project, 2007-06-25 to 2007-10-12, A marks actual dates.
Weber Masterstudies & Human Ressources Ltd.

## Calendars

- Standard: Mon-Fri 08:00-12:00, 13:00-17:00; Sat-Sun off.

## Schedule

| ID | WBS | Task | Type | Duration | Start | Finish | Predecessors | Complete | Remaining | Total slack | Free slack | Constraint |
| --- | --- | --- | --- | --- | --- | --- | --- | --- | --- | --- | --- | --- |
| 1 | 1 | **Masterstudy** |  | 80d | 2007-06-25 A | 2007-10-12 |  | 47% | 42.08d | 0d |  |  |
| 2 | 1.1 | **Vorarbeiten** |  | 42d | 2007-06-25 A | 2007-08-21 |  | 72% | 11.67d | 23d | 1d |  |
| 3 | 1.1.1 | **Literatursuche** |  | 5d | 2007-06-25 A | 2007-06-29 A |  | 100% |  |  |  |  |
| 4 | 1.1.1.1 | Webrecherche |  | 2d | 2007-06-25 A | 2007-06-26 A |  | 100% |  |  |  |  |
| 5 | 1.1.1.2 | Zentralbibliothek |  | 2d | 2007-06-27 A | 2007-06-28 A | 4 | 100% |  |  |  |  |
| 6 | 1.1.1.3 | Buchhandlung |  | 1d | 2007-06-29 A | 2007-06-29 A | 5 | 100% |  |  |  |  |
| 7 | 1.1.2 | Entwicklung Strategie |  | 5d | 2007-06-25 A | 2007-06-29 A |  | 100% |  |  |  |  |
| 8 | 1.1.3 | Literaturstudium |  | 30d | 2007-07-02 A | 2007-08-10 | 3 | 90% | 3d | 30d |  | start no earlier than 2007-07-26 |
| 9 | 1.1.4 | Erarbeiten Fragenkatalog |  | 10d | 2007-08-06 A | 2007-08-17 | 7 | 20% | 8d | 23d | 0d |  |
| 10 | 1.1.5 | Review 1 | milestone | 0d | 2007-08-21 | 2007-08-21 |  |  |  | 24d |  | start no earlier than 2007-08-21 |
| 11 | 1.1.6 | Setup Survey Applikation |  | 2d | 2007-08-20 | 2007-08-21 | 9 |  |  | 23d |  |  |
| 12 | 1.1.7 | Erarbeiten der Einladungsschreiben |  | 2d | 2007-08-20 | 2007-08-21 | 9 |  |  | 23d |  | start no earlier than 2007-07-11 |
| 13 | 1.2 | **Datenerhebung** |  | 12d | 2007-08-23 | 2007-09-07 | 2 |  |  | 24d |  |  |
| 14 | 1.2.1 | Start der Umfrage |  | 10d | 2007-08-23 | 2007-09-05 |  |  |  | 24d | 0d | start no earlier than 2007-08-23 |
| 15 | 1.2.2 | Auswertung der Umfrage |  | 2d | 2007-09-06 | 2007-09-07 | 14 |  |  | 24d | 0d |  |
| 16 | 1.2.3 | Review 3 | milestone | 0d | 2007-09-07 | 2007-09-07 | 15 |  |  | 24d |  |  |
| 17 | 1.3 | **Umsetzung** |  | 32d | 2007-08-23 A | 2007-10-05 | 2 | 32% | 21.7d | 0d |  |  |
| 18 | 1.3.1 | Kapitel 1 - Einleitung |  | 7d | 2007-08-23 A | 2007-08-31 |  | 90% | 0.7d | 1.6d | 0d |  |
| 19 | 1.3.2 | Kapitel 2 - Theorie / Literaturreview |  | 10d | 2007-09-03 A | 2007-09-14 | 18 | 40% | 6d | 0d |  |  |
| 20 | 1.3.3 | Kapitel 3 - Methodologie |  | 5d | 2007-09-17 | 2007-09-21 | 19 |  |  | 0d |  |  |
| 21 | 1.3.4 | Review 2 | milestone | 0d | 2007-09-21 | 2007-09-21 | 20 |  |  | 0d |  |  |
| 22 | 1.3.5 | Kapitel 4 - Ergebnisse / Resultate |  | 6d | 2007-09-24 | 2007-10-01 | 21 |  |  | 0d |  |  |
| 23 | 1.3.6 | Kapitel 5 - Diskussion |  | 4d | 2007-10-02 | 2007-10-05 | 22 |  |  | 0d |  |  |
| 24 | 1.4 | **Vervielfältigung** |  | 5d | 2007-10-08 | 2007-10-12 | 17 |  |  | 0d |  |  |
| 25 | 1.4.1 | Exemplare binden lassen |  | 5d | 2007-10-08 | 2007-10-12 |  |  |  | 0d |  |  |
| 26 | 1.4.2 | CD-ROMs erstellen |  | 1d | 2007-10-08 | 2007-10-08 |  |  |  | 4d |  |  |
